# SmartCare

Schedule from MS Project, 2024-12-01 to 2026-12-08, status date 2025-04-22, costs in $, A marks actual dates.

## Calendars

- Standard: Mon-Wed 08:00-12:00, 13:00-17:00; Thu 08:00-12:00, 13:00-15:00; Fri-Sat off; Sun 08:00-12:00, 13:00-17:00.
- Calendar 1: Mon-Fri 08:00-12:00, 13:00-17:00; Sat-Sun off.

## Resources

| Resource | Group | Rate | Cost per use |
| --- | --- | --- | --- |
| Communication Modules |  |  | 25 |
| Personal Monitoring Devices |  |  | 100 |
| IoT components |  |  | 70 |
| Healthcare Workers' Devices |  |  | 350 |
| Virtual Servers |  | 350 | 350 |
| Cloud Databases |  |  | 500 |
| Penetration Testing Servers |  | 20000 | 20000 |
| Manual Testing Devices |  |  | 350 |
| Networking Units |  |  | 700 |
| Servers for Deployment |  | 250 | 250 |
| Hardware Engineers | 5 | 30 |  |
| Firmware Developers | 3 | 30 |  |
| UI/UX Designers | 3 | 20 |  |
| Frontend Developers | 5 | 30 |  |
| Cloud Architects | 3 | 50 |  |
| Cloud Engineers | 4 | 35 |  |
| Backend Developers | 5 | 35 |  |
| Database Administrators | 3 | 45 |  |
| Integration Engineers | 4 | 34 |  |
| Firmware Engineers | 4 | 30 |  |
| Security Engineers | 6 | 50 |  |
| Penetration Testers | 3 | 50 | 20000 |
| Test Engineers | 6 | 35 |  |
| Quality Assurance Engineers | 4 | 35 |  |
| Training Specialists | 10000 | 15 |  |
| Customer Support Representative | 200 | 15 |  |
| Project Manager | 1 | 70 |  |
| Database Engineers | 3 | 30 |  |
| Network Engineers | 4 | 35 |  |
| System Architect | 2 | 50 |  |
| Embedded Engineers | 2 | 32 |  |
| Mobile Developers | 2 | 45 |  |
| Documentation Specialists | 1 | 15 |  |
| Monitoring Engineers |  | 35 |  |
| IT Support |  | 40 |  |
| Project |  |  |  |

## Schedule

| ID | WBS | Task | Duration | Start | Finish | Predecessors | Complete | Remaining | Baseline start | Baseline finish | Baseline duration | Total slack | Resources | Work | Actual work | Cost | Baseline cost | Actual cost |
| --- | --- | --- | --- | --- | --- | --- | --- | --- | --- | --- | --- | --- | --- | --- | --- | --- | --- | --- |
| 1 | 1 | **SmartCare Health System** | 500.83d | 2024-12-01 A | 2026-12-08 |  | 33% | 335.59d | 2024-12-01 | 2026-12-08 | 500.83d | 0d | Project Manager [80%]; Backend Developers; Cloud Architects; Cloud Databases; Cloud Engineers; Communication Modules; Customer Support Representative; Database Administrators; Database Engineers; Documentation Specialists; Embedded Engineers; Firmware Developers; Firmware Engineers; Frontend Developers; Hardware Engineers; Virtual Servers; Healthcare Workers' Devices; Integration Engineers; IoT components; Test Engineers; Monitoring Engineers; IT Support; Mobile Developers; Manual Testing Devices; UI/UX Designers; Quality Assurance Engineers; Personal Monitoring Devices; Networking Units; Network Engineers; Penetration Testers; Training Specialists; System Architect; Servers for Deployment; Security Engineers; Project; Penetration Testing Servers | 107968h | 35525.6h | 3,778,924.33 | 3,778,924.33 | 1,258,556.34 |
| 2 | 1.1 | **Execution Phase** | 322.83d | 2024-12-01 A | 2026-03-19 |  | 46% | 174.88d | 2024-12-01 | 2026-03-19 | 322.83d | 0d |  | 2446.4h | 1356h | 89,000 | 89,000 | 45,276 |
| 3 | 1.1.1 | **Develop IoT Sensors** | 43d | 2024-12-01 A | 2025-02-02 A |  | 100% |  | 2024-12-01 | 2025-02-02 | 43d |  |  | 384h | 384h | 11,660 | 11,660 | 11,660 |
| 4 | 1.1.1.1 | **Hardware Development** | 23d | 2024-12-01 A | 2025-01-01 A |  | 100% |  | 2024-12-01 | 2025-01-01 | 23d |  | Hardware Engineers | 184h | 184h | 5,660 | 5,660 | 5,660 |
| 5 | 1.1.1.1.1 | Select appropriate microcontrollers | 7d | 2024-12-01 A | 2024-12-10 A |  | 100% |  | 2024-12-01 | 2024-12-10 | 7d |  | IoT components |  |  | 70 | 70 | 70 |
| 6 | 1.1.1.1.2 | Choose compatible sensors for vital signs | 7d | 2024-12-01 A | 2024-12-10 A |  | 100% |  | 2024-12-01 | 2024-12-10 | 7d |  | IoT components |  |  | 70 | 70 | 70 |
| 7 | 1.1.1.1.3 | Design and assemble circuit boards. | 16d | 2024-12-10 A | 2025-01-01 A | 5, 6 | 100% |  | 2024-12-10 | 2025-01-01 | 16d |  |  |  |  |  |  |  |
| 8 | 1.1.1.2 | **Firmware Development** | 20d | 2025-01-02 A | 2025-02-02 A |  | 100% |  | 2025-01-02 | 2025-02-02 | 20d |  |  | 200h | 200h | 6,000 | 6,000 | 6,000 |
| 9 | 1.1.1.2.1 | Write firmware for microcontrollers using languages like C/C++. | 7d | 2025-01-02 A | 2025-01-13 A | 4 | 100% |  | 2025-01-02 | 2025-01-13 | 7d |  | Firmware Developers | 56h | 56h | 1,680 | 1,680 | 1,680 |
| 10 | 1.1.1.2.2 | Implement drivers for sensors | 20d | 2025-01-02 A | 2025-02-02 A | 9SS | 100% |  | 2025-01-02 | 2025-02-02 | 20d |  | Firmware Engineers [50%] | 80h | 80h | 2,400 | 2,400 | 2,400 |
| 11 | 1.1.1.2.3 | Calibrate sensors to meet accuracy requirements. | 16d | 2025-01-08 A | 2025-02-02 A | 10FF | 100% |  | 2025-01-08 | 2025-02-02 | 16d |  | Firmware Engineers [50%] | 64h | 64h | 1,920 | 1,920 | 1,920 |
| 12 | 1.1.2 | **Develop Mobile App Frontend** | 50d | 2024-12-01 A | 2025-02-11 A | 3SS | 100% |  | 2024-12-01 | 2025-02-11 | 50d |  |  | 400h | 400h | 10,400 | 10,400 | 10,400 |
| 13 | 1.1.2.1 | User Interface (UI/UX) Design | 20d | 2024-12-01 A | 2024-12-29 A |  | 100% |  | 2024-12-01 | 2024-12-29 | 20d |  | UI/UX Designers | 160h | 160h | 3,200 | 3,200 | 3,200 |
| 14 | 1.1.2.2 | Frontend Development | 30d | 2024-12-30 A | 2025-02-11 A | 13 | 100% |  | 2024-12-30 | 2025-02-11 | 30d |  | Frontend Developers [50%] | 120h | 120h | 3,600 | 3,600 | 3,600 |
| 15 | 1.1.2.3 | Data Visualization | 30d | 2024-12-30 A | 2025-02-11 A | 14SS | 100% |  | 2024-12-30 | 2025-02-11 | 30d |  | Frontend Developers [50%] | 120h | 120h | 3,600 | 3,600 | 3,600 |
| 16 | 1.1.3 | **Set Up Cloud Infrastructure** | 97.48d | 2024-12-01 A | 2025-04-22 A | 3SS | 100% |  | 2024-12-01 | 2025-04-22 | 97.48d |  |  | 338.4h | 338.4h | 13,840 | 13,840 | 13,840 |
| 17 | 1.1.3.1 | Define Cloud Requirements | 15.15d | 2024-12-01 A | 2024-12-22 A |  | 100% |  | 2024-12-01 | 2024-12-22 | 15.15d |  | Cloud Architects [33%] | 40h | 40h | 2,000 | 2,000 | 2,000 |
| 18 | 1.1.3.2 | Choose a Cloud Service Provider | 3d | 2024-12-22 A | 2024-12-25 A | 17 | 100% |  | 2024-12-22 | 2024-12-25 | 3d |  | Cloud Architects [33%] | 7.92h | 7.92h | 396 | 396 | 396 |
| 19 | 1.1.3.3 | Set Up Databases | 10d | 2024-12-22 A | 2025-01-06 A | 18SS | 100% |  | 2024-12-22 | 2025-01-06 | 10d |  | Database Engineers [50%] | 40h | 40h | 1,200 | 1,200 | 1,200 |
| 20 | 1.1.3.4 | Set Up Virtual Servers | 14d | 2024-12-22 A | 2025-01-12 A | 19SS | 100% |  | 2024-12-22 | 2025-01-12 | 14d |  | Cloud Engineers [50%] | 56h | 56h | 1,960 | 1,960 | 1,960 |
| 21 | 1.1.3.5 | Data Storage and Backup Configuration | 10d | 2024-12-29 A | 2025-01-12 A | 20FF | 100% |  | 2024-12-29 | 2025-01-12 | 10d |  | Cloud Engineers [50%] | 40h | 40h | 1,400 | 1,400 | 1,400 |
| 22 | 1.1.3.6 | Cloud Security Implementation | 33.33d | 2025-01-12 A | 2025-03-02 A | 21 | 100% |  | 2025-01-12 | 2025-03-02 | 33.33d |  | Security Engineers [30%] | 80h | 80h | 4,000 | 4,000 | 4,000 |
| 23 | 1.1.3.7 | Networking and Connectivity | 28d | 2025-03-02 A | 2025-04-13 A | 22 | 100% |  | 2025-03-02 | 2025-04-13 | 28d |  | Network Engineers [25%] | 56h | 56h | 1,960 | 1,960 | 1,960 |
| 24 | 1.1.3.8 | Disaster Recovery Planning | 7d | 2025-04-13 A | 2025-04-22 A | 23 | 100% |  | 2025-04-13 | 2025-04-22 | 7d |  | Cloud Architects [33%] | 18.48h | 18.48h | 924 | 924 | 924 |

Notes:
- 2: The Execution Phase is where the actual work of the project is carried out. This phase focuses on delivering the outputs and deliverables according to the plan created during the Planning Phase.
- 3: Assemble hardware and program sensors to capture vital signs (heart rate, blood pressure, etc.). Conduct initial testing.
- 5: (e.g., Arduino, ESP32).
- 12: Design UI/UX, create dashboards for displaying health data.
- 16: Deploy cloud servers, configure databases (AWS/Azure), and ensure security.

| ID | WBS | Task | Type | Duration | Start | Finish | Predecessors | Complete | Remaining | Baseline start | Baseline finish | Baseline duration | Total slack | Free slack | Resources | Work | Actual work | Cost | Baseline cost | Actual cost |
| --- | --- | --- | --- | --- | --- | --- | --- | --- | --- | --- | --- | --- | --- | --- | --- | --- | --- | --- | --- | --- |
| 25 | 1.1.4 | **Develop Mobile App Backend** |  | 162.5d | 2025-02-11 A | 2025-10-08 | 12 | 23% | 125.17d | 2025-02-11 | 2025-10-08 | 162.5d | 0d |  |  | 680h | 233.6h | 26,200 | 26,200 | 9,376 |
| 26 | 1.1.4.1 | Define Backend Requirements |  | 12.5d | 2025-02-11 A | 2025-03-02 A |  | 100% |  | 2025-02-11 | 2025-03-02 | 12.5d |  |  | Backend Developers [40%] | 40h | 40h | 1,400 | 1,400 | 1,400 |
| 27 | 1.1.4.2 | Design System Architecture |  | 10d | 2025-03-02 A | 2025-03-17 A | 26 | 100% |  | 2025-03-02 | 2025-03-17 | 10d |  |  | System Architect | 80h | 80h | 4,000 | 4,000 | 4,000 |
| 28 | 1.1.4.3 | Develop Core Backend Services |  | 50d | 2025-03-02 A | 2025-05-14 | 27SS | 71% | 14.5d | 2025-03-02 | 2025-05-14 | 50d | 0d |  | Backend Developers [40%] | 160h | 113.6h | 5,600 | 5,600 | 3,976 |
| 29 | 1.1.4.4 | Implement Data Security Measures |  | 50d | 2025-05-14 | 2025-07-27 | 28 |  |  | 2025-05-14 | 2025-07-27 | 50d | 0d |  | Security Engineers [30%] | 120h |  | 6,000 | 6,000 |  |
| 30 | 1.1.4.5 | API Development and Integration |  | 100d | 2025-05-14 | 2025-10-08 | 29SS |  |  | 2025-05-14 | 2025-10-08 | 100d | 0d |  | Backend Developers [20%] | 160h |  | 5,600 | 5,600 |  |
| 31 | 1.1.4.6 | Database Development |  | 30d | 2025-05-14 | 2025-06-26 | 30SS |  |  | 2025-05-14 | 2025-06-26 | 30d | 70d |  | Database Engineers [50%] | 120h |  | 3,600 | 3,600 |  |
| 32 | 1.1.5 | **Integrate IoT Devices with Mobile App** |  | 27d | 2025-10-08 | 2025-11-17 | 3, 25 |  |  | 2025-10-08 | 2025-11-17 | 27d | 0d |  |  | 268h |  | 10,140 | 10,140 |  |
| 33 | 1.1.5.1 | Define Integration Requirements |  | 10d | 2025-10-08 | 2025-10-22 |  |  |  | 2025-10-08 | 2025-10-22 | 10d | 0d |  | Integration Engineers [50%] | 40h |  | 1,360 | 1,360 |  |
| 34 | 1.1.5.2 | Establish Communication Protocols |  | 10d | 2025-10-23 | 2025-11-06 | 33 |  |  | 2025-10-23 | 2025-11-06 | 10d | 0d |  | Integration Engineers [50%] | 40h |  | 1,360 | 1,360 |  |
| 35 | 1.1.5.3 | Configure hardware protocols |  | 10d | 2025-10-23 | 2025-11-06 | 33 |  |  | 2025-10-23 | 2025-11-06 | 10d | 7d | 0d | Embedded Engineers | 80h |  | 2,560 | 2,560 |  |
| 36 | 1.1.5.4 | Develop app-side communication modules. |  | 20d | 2025-10-08 | 2025-11-06 | 35FF |  |  | 2025-10-08 | 2025-11-06 | 20d | 7d |  | Mobile Developers [50%] | 80h |  | 3,600 | 3,600 |  |
| 37 | 1.1.5.5 | Implement Data Synchronization |  | 7d | 2025-11-06 | 2025-11-17 | 34 |  |  | 2025-11-06 | 2025-11-17 | 7d | 0d |  | Mobile Developers [50%] | 28h |  | 1,260 | 1,260 |  |
| 38 | 1.1.6 | **Security Implementation** |  | 83.33d | 2025-11-18 | 2026-03-19 | 32 |  |  | 2025-11-18 | 2026-03-19 | 83.33d | 0d |  |  | 376h |  | 16,760 | 16,760 |  |
| 39 | 1.1.6.1 | Define Security Requirements |  | 50d | 2025-11-18 | 2026-01-29 |  |  |  | 2025-11-18 | 2026-01-29 | 50d | 0d |  | Security Engineers [10%] | 40h |  | 2,000 | 2,000 |  |
| 40 | 1.1.6.2 | Implement Data Encryption |  | 33.33d | 2026-01-29 | 2026-03-19 | 39 |  |  | 2026-01-29 | 2026-03-19 | 33.33d | 0d |  | Security Engineers [30%] | 80h |  | 4,000 | 4,000 |  |
| 41 | 1.1.6.3 | Secure Authentication and Authorization |  | 16.67d | 2026-01-29 | 2026-02-24 | 40SS |  |  | 2026-01-29 | 2026-02-24 | 16.67d | 9.67d | 0d | Security Engineers [30%] | 40h |  | 2,000 | 2,000 |  |
| 42 | 1.1.6.4 | Network Security |  | 7d | 2026-02-24 | 2026-03-05 | 41 |  |  | 2026-02-24 | 2026-03-05 | 7d | 9.67d |  | Network Engineers | 56h |  | 1,960 | 1,960 |  |
| 43 | 1.1.6.5 | Secure API Development |  | 33.33d | 2025-11-18 | 2026-01-06 | 30 |  |  | 2025-11-18 | 2026-01-06 | 33.33d | 50d |  | Backend Developers; Security Engineers [30%] | 160h |  | 6,800 | 6,800 |  |
| 44 | 1.2 | Device Setup Completed | milestone | 0d | 2024-12-01 A | 2024-12-01 A | 2SS | 100% |  | 2024-12-01 | 2024-12-01 | 0d |  |  |  |  |  |  |  |  |
| 45 | 1.3 | **Testing Phase** |  | 113d | 2026-03-19 | 2026-09-02 | 2 |  |  | 2026-03-19 | 2026-09-02 | 113d | 0d |  |  | 1112h |  | 64,360 | 64,360 |  |
| 46 | 1.3.1 | Set Up Test Environment |  | 1w | 2026-03-19 | 2026-03-29 | 2 |  |  | 2026-03-19 | 2026-03-29 | 1w | 0d |  | Test Engineers; Cloud Engineers | 80h |  | 2,800 | 2,800 |  |
| 47 | 1.3.2 | **Execute Unit Testing** |  | 15d | 2026-03-19 | 2026-04-12 | 46SS |  |  | 2026-03-19 | 2026-04-12 | 15d | 0d |  | Backend Developers; Cloud Architects; Firmware Developers; Mobile Developers | 480h |  | 19,200 | 19,200 |  |
| 48 | 1.3.2.1 | Test IoT Sensors |  | 5d | 2026-03-19 | 2026-03-29 |  |  |  | 2026-03-19 | 2026-03-29 | 5d | 0d |  |  |  |  |  |  |  |
| 49 | 1.3.2.2 | Test Mobile App Frontend |  | 5d | 2026-03-29 | 2026-04-05 | 48 |  |  | 2026-03-29 | 2026-04-05 | 5d | 0d |  |  |  |  |  |  |  |
| 50 | 1.3.2.3 | Test Mobile App Backend |  | 5d | 2026-04-05 | 2026-04-12 | 49 |  |  | 2026-04-05 | 2026-04-12 | 5d | 0d |  |  |  |  |  |  |  |
| 51 | 1.3.2.4 | Cloud Infrastructure Tests |  | 5d | 2026-04-05 | 2026-04-12 | 50FF |  |  | 2026-04-05 | 2026-04-12 | 5d | 0d |  |  |  |  |  |  |  |

Notes:
- 25: Implement APIs for data management (fetch/store data), integrate encryption, and secure data transmission.
- 32: Connect IoT sensors with the mobile app via Bluetooth/Wi-Fi and ensure seamless data transfer.
- 38: Implement encryption (AES/RSA), setup multi-factor authentication for user access.
- 45: The Testing Phase is critical for ensuring the quality, functionality, and security of the project deliverables. This phase verifies that the system performs as intended, is secure, and meets all project requirements.
- 46: Prepare hardware, software, and network configurations for a controlled and reliable testing setup.
- 47: Test individual components like IoT sensors and app modules to ensure they function as expected in isolation.

| ID | WBS | Task | Type | Duration | Start | Finish | Predecessors | Complete | Baseline start | Baseline finish | Baseline duration | Total slack | Free slack | Resources | Work | Cost | Baseline cost |
| --- | --- | --- | --- | --- | --- | --- | --- | --- | --- | --- | --- | --- | --- | --- | --- | --- | --- |
| 52 | 1.3.3 | **Execute Integration Testing** |  | 15d | 2026-04-12 | 2026-05-04 | 47 |  | 2026-04-12 | 2026-05-04 | 15d | 0d |  | Test Engineers | 120h | 4,200 | 4,200 |
| 53 | 1.3.3.1 | Test Data Transmission |  | 5d | 2026-04-12 | 2026-04-19 | 47 |  | 2026-04-12 | 2026-04-19 | 5d | 0d |  |  |  |  |  |
| 54 | 1.3.3.2 | Test App-Cloud Sync |  | 5d | 2026-04-12 | 2026-04-19 | 53SS |  | 2026-04-12 | 2026-04-19 | 5d | 0d |  |  |  |  |  |
| 55 | 1.3.3.3 | Check API Endpoints |  | 3d | 2026-04-19 | 2026-04-22 | 54 |  | 2026-04-19 | 2026-04-22 | 3d | 0d |  |  |  |  |  |
| 56 | 1.3.3.4 | Test System Workflows |  | 7d | 2026-04-22 | 2026-05-04 | 55 |  | 2026-04-22 | 2026-05-04 | 7d | 0d |  |  |  |  |  |
| 57 | 1.3.3.5 | Test Failure Handling |  | 7d | 2026-04-22 | 2026-05-04 | 55 |  | 2026-04-22 | 2026-05-04 | 7d | 0d |  |  |  |  |  |
| 58 | 1.3.4 | **Execute Performance Testing** |  | 5d | 2026-05-04 | 2026-05-11 | 52 |  | 2026-05-04 | 2026-05-11 | 5d | 0d |  | Backend Developers; Cloud Engineers | 80h | 2,800 | 2,800 |
| 59 | 1.3.4.1 | App Load Testing |  | 5d | 2026-05-04 | 2026-05-11 | 52 |  | 2026-05-04 | 2026-05-11 | 5d | 0d |  |  |  |  |  |
| 60 | 1.3.4.2 | Cloud Load Testing |  | 5d | 2026-05-04 | 2026-05-11 | 59SS |  | 2026-05-04 | 2026-05-11 | 5d | 5d |  |  |  |  |  |
| 61 | 1.3.4.3 | Network Load Testing |  | 5d | 2026-05-04 | 2026-05-11 | 59SS |  | 2026-05-04 | 2026-05-11 | 5d | 0d |  |  |  |  |  |
| 62 | 1.3.5 | **Execute Security Testing** |  | 10d | 2026-05-04 | 2026-05-18 | 52 |  | 2026-05-04 | 2026-05-18 | 10d | 0d |  | Penetration Testers; Security Engineers | 160h | 28,000 | 28,000 |
| 63 | 1.3.5.1 | Verify Data Encryption Mechanisms |  | 5d | 2026-05-04 | 2026-05-11 |  |  | 2026-05-04 | 2026-05-11 | 5d | 3d | 0d |  |  |  |  |
| 64 | 1.3.5.2 | Conduct Penetration Testing |  | 7d | 2026-05-04 | 2026-05-13 | 63SS |  | 2026-05-04 | 2026-05-13 | 7d | 3d | 0d |  |  |  |  |
| 65 | 1.3.5.3 | Test Authentication and Authorization Mechanisms |  | 5d | 2026-05-06 | 2026-05-13 | 64FF |  | 2026-05-06 | 2026-05-13 | 5d | 3d |  |  |  |  |  |
| 66 | 1.3.5.4 | Test Network Security |  | 5d | 2026-05-04 | 2026-05-11 | 61SS |  | 2026-05-04 | 2026-05-11 | 5d | 0d |  |  |  |  |  |
| 67 | 1.3.5.5 | Perform Vulnerability Scanning |  | 5d | 2026-05-11 | 2026-05-18 | 66 |  | 2026-05-11 | 2026-05-18 | 5d | 0d |  |  |  |  |  |
| 68 | 1.3.5.6 | Simulate Insider Attacks |  | 5d | 2026-05-11 | 2026-05-18 | 67SS |  | 2026-05-11 | 2026-05-18 | 5d | 0d |  |  |  |  |  |
| 69 | 1.3.6 | Conduct User Acceptance Testing |  | 70d | 2026-05-18 | 2026-08-30 | 62, 58 |  | 2026-05-18 | 2026-08-30 | 70d | 0d |  | Project Manager [10%]; Test Engineers; UI/UX Designers | 168h | 7,000 | 7,000 |
| 70 | 1.3.7 | Generate Test Reports |  | 3d | 2026-08-30 | 2026-09-02 | 69 |  | 2026-08-30 | 2026-09-02 | 3d | 0d |  | Documentation Specialists | 24h | 360 | 360 |
| 71 | 1.4 | Final System Testing Complete | milestone | 0d | 2024-12-01 A | 2024-12-01 A |  | 100% | 2024-12-01 | 2024-12-01 | 0d |  |  |  |  |  |  |
| 72 | 1.5 | **Deployment Phase** |  | 45d | 2026-09-02 | 2026-11-09 | 45 |  | 2026-09-02 | 2026-11-09 | 45d | 0d |  |  | 480h | 18,200 | 18,200 |
| 73 | 1.5.1 | Deploy system in hospital/clinic pilot locations |  | 20d | 2026-09-02 | 2026-10-01 | 45 |  | 2026-09-02 | 2026-10-01 | 20d | 0d |  | System Architect | 160h | 8,000 | 8,000 |
| 74 | 1.5.2 | Monitor system for real-time performance and accuracy |  | 15d | 2026-10-01 | 2026-10-25 | 73 |  | 2026-10-01 | 2026-10-25 | 15d | 0d |  | Monitoring Engineers; IT Support | 240h | 9,000 | 9,000 |
| 75 | 1.5.3 | Train healthcare staff on using the system |  | 10d | 2026-10-25 | 2026-11-09 | 74 |  | 2026-10-25 | 2026-11-09 | 10d | 0d |  | Training Specialists | 80h | 1,200 | 1,200 |

Notes:
- 52: Verify seamless communication and data flow between system components, such as IoT sensors, the app, and cloud infrastructure.
- 58: Evaluate the system's speed, reliability, and scalability under real-world conditions, ensuring robust performance.
- 62: dentify vulnerabilities by testing encryption, compliance with security standards, and penetration testing to ensure data protection
- 69: Engage end-users (e.g., healthcare professionals) to validate system usability and collect feedback for final adjustments.
- 70: Document test results, including any defects and their resolutions, to ensure stakeholders have a clear overview of system quality.
- 72: Deploy the IoT healthcare system into a pilot environment.

| ID | WBS | Task | Duration | Start | Finish | Predecessors | Complete | Remaining | Baseline start | Baseline finish | Baseline duration | Total slack | Constraint | Calendar | Resources | Work | Actual work | Cost | Baseline cost | Actual cost |
| --- | --- | --- | --- | --- | --- | --- | --- | --- | --- | --- | --- | --- | --- | --- | --- | --- | --- | --- | --- | --- |
| 76 | 1.6 | **Communication and Progress Updates** | 496.83d | 2024-12-05 A | 2026-12-08 | 2SS | 16% | 417.34d | 2024-12-05 | 2026-12-08 | 496.83d | 0d |  |  | Project Manager [10%] | 557.47h | 63.59h | 30,222.67 | 30,222.67 | 4,451.63 |
| 77 | 1.6.1 | **Regular Status Meetings** | 521d | 2024-12-05 A | 2026-12-03 |  | 19% | 421.76d | 2024-12-05 | 2026-12-03 | 521d | 2.08d |  | Calendar 1 |  |  |  |  |  |  |
| 78 | 1.6.1.1 | Regular Status Meetings 1 | 1d | 2024-12-05 A | 2024-12-05 A |  | 100% |  | 2024-12-05 | 2024-12-05 | 1d |  | start no earlier than 2024-12-05 | Calendar 1 |  |  |  |  |  |  |
| 79 | 1.6.1.2 | Regular Status Meetings 2 | 1d | 2024-12-12 A | 2024-12-12 A |  | 100% |  | 2024-12-12 | 2024-12-12 | 1d |  | start no earlier than 2024-12-12 | Calendar 1 |  |  |  |  |  |  |
| 80 | 1.6.1.3 | Regular Status Meetings 3 | 1d | 2024-12-19 A | 2024-12-19 A |  | 100% |  | 2024-12-19 | 2024-12-19 | 1d |  | start no earlier than 2024-12-19 | Calendar 1 |  |  |  |  |  |  |
| 81 | 1.6.1.4 | Regular Status Meetings 4 | 1d | 2024-12-26 A | 2024-12-26 A |  | 100% |  | 2024-12-26 | 2024-12-26 | 1d |  | start no earlier than 2024-12-26 | Calendar 1 |  |  |  |  |  |  |
| 82 | 1.6.1.5 | Regular Status Meetings 5 | 1d | 2025-01-02 A | 2025-01-02 A |  | 100% |  | 2025-01-02 | 2025-01-02 | 1d |  | start no earlier than 2025-01-02 | Calendar 1 |  |  |  |  |  |  |
| 83 | 1.6.1.6 | Regular Status Meetings 6 | 1d | 2025-01-09 A | 2025-01-09 A |  | 100% |  | 2025-01-09 | 2025-01-09 | 1d |  | start no earlier than 2025-01-09 | Calendar 1 |  |  |  |  |  |  |
| 84 | 1.6.1.7 | Regular Status Meetings 7 | 1d | 2025-01-16 A | 2025-01-16 A |  | 100% |  | 2025-01-16 | 2025-01-16 | 1d |  | start no earlier than 2025-01-16 | Calendar 1 |  |  |  |  |  |  |
| 85 | 1.6.1.8 | Regular Status Meetings 8 | 1d | 2025-01-23 A | 2025-01-23 A |  | 100% |  | 2025-01-23 | 2025-01-23 | 1d |  | start no earlier than 2025-01-23 | Calendar 1 |  |  |  |  |  |  |
| 86 | 1.6.1.9 | Regular Status Meetings 9 | 1d | 2025-01-30 A | 2025-01-30 A |  | 100% |  | 2025-01-30 | 2025-01-30 | 1d |  | start no earlier than 2025-01-30 | Calendar 1 |  |  |  |  |  |  |
| 87 | 1.6.1.10 | Regular Status Meetings 10 | 1d | 2025-02-06 A | 2025-02-06 A |  | 100% |  | 2025-02-06 | 2025-02-06 | 1d |  | start no earlier than 2025-02-06 | Calendar 1 |  |  |  |  |  |  |
| 88 | 1.6.1.11 | Regular Status Meetings 11 | 1d | 2025-02-13 A | 2025-02-13 A |  | 100% |  | 2025-02-13 | 2025-02-13 | 1d |  | start no earlier than 2025-02-13 | Calendar 1 |  |  |  |  |  |  |
| 89 | 1.6.1.12 | Regular Status Meetings 12 | 1d | 2025-02-20 A | 2025-02-20 A |  | 100% |  | 2025-02-20 | 2025-02-20 | 1d |  | start no earlier than 2025-02-20 | Calendar 1 |  |  |  |  |  |  |
| 90 | 1.6.1.13 | Regular Status Meetings 13 | 1d | 2025-02-27 A | 2025-02-27 A |  | 100% |  | 2025-02-27 | 2025-02-27 | 1d |  | start no earlier than 2025-02-27 | Calendar 1 |  |  |  |  |  |  |
| 91 | 1.6.1.14 | Regular Status Meetings 14 | 1d | 2025-03-06 A | 2025-03-06 A |  | 100% |  | 2025-03-06 | 2025-03-06 | 1d |  | start no earlier than 2025-03-06 | Calendar 1 |  |  |  |  |  |  |
| 92 | 1.6.1.15 | Regular Status Meetings 15 | 1d | 2025-03-13 A | 2025-03-13 A |  | 100% |  | 2025-03-13 | 2025-03-13 | 1d |  | start no earlier than 2025-03-13 | Calendar 1 |  |  |  |  |  |  |
| 93 | 1.6.1.16 | Regular Status Meetings 16 | 1d | 2025-03-20 A | 2025-03-20 A |  | 100% |  | 2025-03-20 | 2025-03-20 | 1d |  | start no earlier than 2025-03-20 | Calendar 1 |  |  |  |  |  |  |
| 94 | 1.6.1.17 | Regular Status Meetings 17 | 1d | 2025-03-27 A | 2025-03-27 A |  | 100% |  | 2025-03-27 | 2025-03-27 | 1d |  | start no earlier than 2025-03-27 | Calendar 1 |  |  |  |  |  |  |
| 95 | 1.6.1.18 | Regular Status Meetings 18 | 1d | 2025-04-03 A | 2025-04-03 A |  | 100% |  | 2025-04-03 | 2025-04-03 | 1d |  | start no earlier than 2025-04-03 | Calendar 1 |  |  |  |  |  |  |
| 96 | 1.6.1.19 | Regular Status Meetings 19 | 1d | 2025-04-10 A | 2025-04-10 A |  | 100% |  | 2025-04-10 | 2025-04-10 | 1d |  | start no earlier than 2025-04-10 | Calendar 1 |  |  |  |  |  |  |
| 97 | 1.6.1.20 | Regular Status Meetings 20 | 1d | 2025-04-17 A | 2025-04-17 A |  | 100% |  | 2025-04-17 | 2025-04-17 | 1d |  | start no earlier than 2025-04-17 | Calendar 1 |  |  |  |  |  |  |
| 98 | 1.6.1.21 | Regular Status Meetings 21 | 1d | 2025-04-24 | 2025-04-24 |  |  |  | 2025-04-24 | 2025-04-24 | 1d | 422.08d | start no earlier than 2025-04-24 | Calendar 1 |  |  |  |  |  |  |
| 99 | 1.6.1.22 | Regular Status Meetings 22 | 1d | 2025-05-01 | 2025-05-01 |  |  |  | 2025-05-01 | 2025-05-01 | 1d | 417.08d | start no earlier than 2025-05-01 | Calendar 1 |  |  |  |  |  |  |
| 100 | 1.6.1.23 | Regular Status Meetings 23 | 1d | 2025-05-08 | 2025-05-08 |  |  |  | 2025-05-08 | 2025-05-08 | 1d | 412.08d | start no earlier than 2025-05-08 | Calendar 1 |  |  |  |  |  |  |
| 101 | 1.6.1.24 | Regular Status Meetings 24 | 1d | 2025-05-15 | 2025-05-15 |  |  |  | 2025-05-15 | 2025-05-15 | 1d | 407.08d | start no earlier than 2025-05-15 | Calendar 1 |  |  |  |  |  |  |
| 102 | 1.6.1.25 | Regular Status Meetings 25 | 1d | 2025-05-22 | 2025-05-22 |  |  |  | 2025-05-22 | 2025-05-22 | 1d | 402.08d | start no earlier than 2025-05-22 | Calendar 1 |  |  |  |  |  |  |
| 103 | 1.6.1.26 | Regular Status Meetings 26 | 1d | 2025-05-29 | 2025-05-29 |  |  |  | 2025-05-29 | 2025-05-29 | 1d | 397.08d | start no earlier than 2025-05-29 | Calendar 1 |  |  |  |  |  |  |
| 104 | 1.6.1.27 | Regular Status Meetings 27 | 1d | 2025-06-05 | 2025-06-05 |  |  |  | 2025-06-05 | 2025-06-05 | 1d | 392.08d | start no earlier than 2025-06-05 | Calendar 1 |  |  |  |  |  |  |
| 105 | 1.6.1.28 | Regular Status Meetings 28 | 1d | 2025-06-12 | 2025-06-12 |  |  |  | 2025-06-12 | 2025-06-12 | 1d | 387.08d | start no earlier than 2025-06-12 | Calendar 1 |  |  |  |  |  |  |
| 106 | 1.6.1.29 | Regular Status Meetings 29 | 1d | 2025-06-19 | 2025-06-19 |  |  |  | 2025-06-19 | 2025-06-19 | 1d | 382.08d | start no earlier than 2025-06-19 | Calendar 1 |  |  |  |  |  |  |
| 107 | 1.6.1.30 | Regular Status Meetings 30 | 1d | 2025-06-26 | 2025-06-26 |  |  |  | 2025-06-26 | 2025-06-26 | 1d | 377.08d | start no earlier than 2025-06-26 | Calendar 1 |  |  |  |  |  |  |
| 108 | 1.6.1.31 | Regular Status Meetings 31 | 1d | 2025-07-03 | 2025-07-03 |  |  |  | 2025-07-03 | 2025-07-03 | 1d | 372.08d | start no earlier than 2025-07-03 | Calendar 1 |  |  |  |  |  |  |
| 109 | 1.6.1.32 | Regular Status Meetings 32 | 1d | 2025-07-10 | 2025-07-10 |  |  |  | 2025-07-10 | 2025-07-10 | 1d | 367.08d | start no earlier than 2025-07-10 | Calendar 1 |  |  |  |  |  |  |
| 110 | 1.6.1.33 | Regular Status Meetings 33 | 1d | 2025-07-17 | 2025-07-17 |  |  |  | 2025-07-17 | 2025-07-17 | 1d | 362.08d | start no earlier than 2025-07-17 | Calendar 1 |  |  |  |  |  |  |
| 111 | 1.6.1.34 | Regular Status Meetings 34 | 1d | 2025-07-24 | 2025-07-24 |  |  |  | 2025-07-24 | 2025-07-24 | 1d | 357.08d | start no earlier than 2025-07-24 | Calendar 1 |  |  |  |  |  |  |
| 112 | 1.6.1.35 | Regular Status Meetings 35 | 1d | 2025-07-31 | 2025-07-31 |  |  |  | 2025-07-31 | 2025-07-31 | 1d | 352.08d | start no earlier than 2025-07-31 | Calendar 1 |  |  |  |  |  |  |
| 113 | 1.6.1.36 | Regular Status Meetings 36 | 1d | 2025-08-07 | 2025-08-07 |  |  |  | 2025-08-07 | 2025-08-07 | 1d | 347.08d | start no earlier than 2025-08-07 | Calendar 1 |  |  |  |  |  |  |
| 114 | 1.6.1.37 | Regular Status Meetings 37 | 1d | 2025-08-14 | 2025-08-14 |  |  |  | 2025-08-14 | 2025-08-14 | 1d | 342.08d | start no earlier than 2025-08-14 | Calendar 1 |  |  |  |  |  |  |
| 115 | 1.6.1.38 | Regular Status Meetings 38 | 1d | 2025-08-21 | 2025-08-21 |  |  |  | 2025-08-21 | 2025-08-21 | 1d | 337.08d | start no earlier than 2025-08-21 | Calendar 1 |  |  |  |  |  |  |
| 116 | 1.6.1.39 | Regular Status Meetings 39 | 1d | 2025-08-28 | 2025-08-28 |  |  |  | 2025-08-28 | 2025-08-28 | 1d | 332.08d | start no earlier than 2025-08-28 | Calendar 1 |  |  |  |  |  |  |
| 117 | 1.6.1.40 | Regular Status Meetings 40 | 1d | 2025-09-04 | 2025-09-04 |  |  |  | 2025-09-04 | 2025-09-04 | 1d | 327.08d | start no earlier than 2025-09-04 | Calendar 1 |  |  |  |  |  |  |
| 118 | 1.6.1.41 | Regular Status Meetings 41 | 1d | 2025-09-11 | 2025-09-11 |  |  |  | 2025-09-11 | 2025-09-11 | 1d | 322.08d | start no earlier than 2025-09-11 | Calendar 1 |  |  |  |  |  |  |
| 119 | 1.6.1.42 | Regular Status Meetings 42 | 1d | 2025-09-18 | 2025-09-18 |  |  |  | 2025-09-18 | 2025-09-18 | 1d | 317.08d | start no earlier than 2025-09-18 | Calendar 1 |  |  |  |  |  |  |
| 120 | 1.6.1.43 | Regular Status Meetings 43 | 1d | 2025-09-25 | 2025-09-25 |  |  |  | 2025-09-25 | 2025-09-25 | 1d | 312.08d | start no earlier than 2025-09-25 | Calendar 1 |  |  |  |  |  |  |
| 121 | 1.6.1.44 | Regular Status Meetings 44 | 1d | 2025-10-02 | 2025-10-02 |  |  |  | 2025-10-02 | 2025-10-02 | 1d | 307.08d | start no earlier than 2025-10-02 | Calendar 1 |  |  |  |  |  |  |
| 122 | 1.6.1.45 | Regular Status Meetings 45 | 1d | 2025-10-09 | 2025-10-09 |  |  |  | 2025-10-09 | 2025-10-09 | 1d | 302.08d | start no earlier than 2025-10-09 | Calendar 1 |  |  |  |  |  |  |
| 123 | 1.6.1.46 | Regular Status Meetings 46 | 1d | 2025-10-16 | 2025-10-16 |  |  |  | 2025-10-16 | 2025-10-16 | 1d | 297.08d | start no earlier than 2025-10-16 | Calendar 1 |  |  |  |  |  |  |
| 124 | 1.6.1.47 | Regular Status Meetings 47 | 1d | 2025-10-23 | 2025-10-23 |  |  |  | 2025-10-23 | 2025-10-23 | 1d | 292.08d | start no earlier than 2025-10-23 | Calendar 1 |  |  |  |  |  |  |
| 125 | 1.6.1.48 | Regular Status Meetings 48 | 1d | 2025-10-30 | 2025-10-30 |  |  |  | 2025-10-30 | 2025-10-30 | 1d | 287.08d | start no earlier than 2025-10-30 | Calendar 1 |  |  |  |  |  |  |
| 126 | 1.6.1.49 | Regular Status Meetings 49 | 1d | 2025-11-06 | 2025-11-06 |  |  |  | 2025-11-06 | 2025-11-06 | 1d | 282.08d | start no earlier than 2025-11-06 | Calendar 1 |  |  |  |  |  |  |
| 127 | 1.6.1.50 | Regular Status Meetings 50 | 1d | 2025-11-13 | 2025-11-13 |  |  |  | 2025-11-13 | 2025-11-13 | 1d | 277.08d | start no earlier than 2025-11-13 | Calendar 1 |  |  |  |  |  |  |
| 128 | 1.6.1.51 | Regular Status Meetings 51 | 1d | 2025-11-20 | 2025-11-20 |  |  |  | 2025-11-20 | 2025-11-20 | 1d | 272.08d | start no earlier than 2025-11-20 | Calendar 1 |  |  |  |  |  |  |
| 129 | 1.6.1.52 | Regular Status Meetings 52 | 1d | 2025-11-27 | 2025-11-27 |  |  |  | 2025-11-27 | 2025-11-27 | 1d | 267.08d | start no earlier than 2025-11-27 | Calendar 1 |  |  |  |  |  |  |
| 130 | 1.6.1.53 | Regular Status Meetings 53 | 1d | 2025-12-04 | 2025-12-04 |  |  |  | 2025-12-04 | 2025-12-04 | 1d | 262.08d | start no earlier than 2025-12-04 | Calendar 1 |  |  |  |  |  |  |
| 131 | 1.6.1.54 | Regular Status Meetings 54 | 1d | 2025-12-11 | 2025-12-11 |  |  |  | 2025-12-11 | 2025-12-11 | 1d | 257.08d | start no earlier than 2025-12-11 | Calendar 1 |  |  |  |  |  |  |
| 132 | 1.6.1.55 | Regular Status Meetings 55 | 1d | 2025-12-18 | 2025-12-18 |  |  |  | 2025-12-18 | 2025-12-18 | 1d | 252.08d | start no earlier than 2025-12-18 | Calendar 1 |  |  |  |  |  |  |
| 133 | 1.6.1.56 | Regular Status Meetings 56 | 1d | 2025-12-25 | 2025-12-25 |  |  |  | 2025-12-25 | 2025-12-25 | 1d | 247.08d | start no earlier than 2025-12-25 | Calendar 1 |  |  |  |  |  |  |
| 134 | 1.6.1.57 | Regular Status Meetings 57 | 1d | 2026-01-01 | 2026-01-01 |  |  |  | 2026-01-01 | 2026-01-01 | 1d | 242.08d | start no earlier than 2026-01-01 | Calendar 1 |  |  |  |  |  |  |
| 135 | 1.6.1.58 | Regular Status Meetings 58 | 1d | 2026-01-08 | 2026-01-08 |  |  |  | 2026-01-08 | 2026-01-08 | 1d | 237.08d | start no earlier than 2026-01-08 | Calendar 1 |  |  |  |  |  |  |
| 136 | 1.6.1.59 | Regular Status Meetings 59 | 1d | 2026-01-15 | 2026-01-15 |  |  |  | 2026-01-15 | 2026-01-15 | 1d | 232.08d | start no earlier than 2026-01-15 | Calendar 1 |  |  |  |  |  |  |
| 137 | 1.6.1.60 | Regular Status Meetings 60 | 1d | 2026-01-22 | 2026-01-22 |  |  |  | 2026-01-22 | 2026-01-22 | 1d | 227.08d | start no earlier than 2026-01-22 | Calendar 1 |  |  |  |  |  |  |
| 138 | 1.6.1.61 | Regular Status Meetings 61 | 1d | 2026-01-29 | 2026-01-29 |  |  |  | 2026-01-29 | 2026-01-29 | 1d | 222.08d | start no earlier than 2026-01-29 | Calendar 1 |  |  |  |  |  |  |
| 139 | 1.6.1.62 | Regular Status Meetings 62 | 1d | 2026-02-05 | 2026-02-05 |  |  |  | 2026-02-05 | 2026-02-05 | 1d | 217.08d | start no earlier than 2026-02-05 | Calendar 1 |  |  |  |  |  |  |
| 140 | 1.6.1.63 | Regular Status Meetings 63 | 1d | 2026-02-12 | 2026-02-12 |  |  |  | 2026-02-12 | 2026-02-12 | 1d | 212.08d | start no earlier than 2026-02-12 | Calendar 1 |  |  |  |  |  |  |
| 141 | 1.6.1.64 | Regular Status Meetings 64 | 1d | 2026-02-19 | 2026-02-19 |  |  |  | 2026-02-19 | 2026-02-19 | 1d | 207.08d | start no earlier than 2026-02-19 | Calendar 1 |  |  |  |  |  |  |
| 142 | 1.6.1.65 | Regular Status Meetings 65 | 1d | 2026-02-26 | 2026-02-26 |  |  |  | 2026-02-26 | 2026-02-26 | 1d | 202.08d | start no earlier than 2026-02-26 | Calendar 1 |  |  |  |  |  |  |
| 143 | 1.6.1.66 | Regular Status Meetings 66 | 1d | 2026-03-05 | 2026-03-05 |  |  |  | 2026-03-05 | 2026-03-05 | 1d | 197.08d | start no earlier than 2026-03-05 | Calendar 1 |  |  |  |  |  |  |
| 144 | 1.6.1.67 | Regular Status Meetings 67 | 1d | 2026-03-12 | 2026-03-12 |  |  |  | 2026-03-12 | 2026-03-12 | 1d | 192.08d | start no earlier than 2026-03-12 | Calendar 1 |  |  |  |  |  |  |
| 145 | 1.6.1.68 | Regular Status Meetings 68 | 1d | 2026-03-19 | 2026-03-19 |  |  |  | 2026-03-19 | 2026-03-19 | 1d | 187.08d | start no earlier than 2026-03-19 | Calendar 1 |  |  |  |  |  |  |

Notes:
- 76: Ensure stakeholders are kept informed of project progress and any issues encountered during execution.

| ID | WBS | Task | Duration | Start | Finish | Predecessors | Baseline start | Baseline finish | Baseline duration | Total slack | Constraint | Calendar | Resources | Work | Cost | Baseline cost |
| --- | --- | --- | --- | --- | --- | --- | --- | --- | --- | --- | --- | --- | --- | --- | --- | --- |
| 146 | 1.6.1.69 | Regular Status Meetings 69 | 1d | 2026-03-26 | 2026-03-26 |  | 2026-03-26 | 2026-03-26 | 1d | 182.08d | start no earlier than 2026-03-26 | Calendar 1 |  |  |  |  |
| 147 | 1.6.1.70 | Regular Status Meetings 70 | 1d | 2026-04-02 | 2026-04-02 |  | 2026-04-02 | 2026-04-02 | 1d | 177.08d | start no earlier than 2026-04-02 | Calendar 1 |  |  |  |  |
| 148 | 1.6.1.71 | Regular Status Meetings 71 | 1d | 2026-04-09 | 2026-04-09 |  | 2026-04-09 | 2026-04-09 | 1d | 172.08d | start no earlier than 2026-04-09 | Calendar 1 |  |  |  |  |
| 149 | 1.6.1.72 | Regular Status Meetings 72 | 1d | 2026-04-16 | 2026-04-16 |  | 2026-04-16 | 2026-04-16 | 1d | 167.08d | start no earlier than 2026-04-16 | Calendar 1 |  |  |  |  |
| 150 | 1.6.1.73 | Regular Status Meetings 73 | 1d | 2026-04-23 | 2026-04-23 |  | 2026-04-23 | 2026-04-23 | 1d | 162.08d | start no earlier than 2026-04-23 | Calendar 1 |  |  |  |  |
| 151 | 1.6.1.74 | Regular Status Meetings 74 | 1d | 2026-04-30 | 2026-04-30 |  | 2026-04-30 | 2026-04-30 | 1d | 157.08d | start no earlier than 2026-04-30 | Calendar 1 |  |  |  |  |
| 152 | 1.6.1.75 | Regular Status Meetings 75 | 1d | 2026-05-07 | 2026-05-07 |  | 2026-05-07 | 2026-05-07 | 1d | 152.08d | start no earlier than 2026-05-07 | Calendar 1 |  |  |  |  |
| 153 | 1.6.1.76 | Regular Status Meetings 76 | 1d | 2026-05-14 | 2026-05-14 |  | 2026-05-14 | 2026-05-14 | 1d | 147.08d | start no earlier than 2026-05-14 | Calendar 1 |  |  |  |  |
| 154 | 1.6.1.77 | Regular Status Meetings 77 | 1d | 2026-05-21 | 2026-05-21 |  | 2026-05-21 | 2026-05-21 | 1d | 142.08d | start no earlier than 2026-05-21 | Calendar 1 |  |  |  |  |
| 155 | 1.6.1.78 | Regular Status Meetings 78 | 1d | 2026-05-28 | 2026-05-28 |  | 2026-05-28 | 2026-05-28 | 1d | 137.08d | start no earlier than 2026-05-28 | Calendar 1 |  |  |  |  |
| 156 | 1.6.1.79 | Regular Status Meetings 79 | 1d | 2026-06-04 | 2026-06-04 |  | 2026-06-04 | 2026-06-04 | 1d | 132.08d | start no earlier than 2026-06-04 | Calendar 1 |  |  |  |  |
| 157 | 1.6.1.80 | Regular Status Meetings 80 | 1d | 2026-06-11 | 2026-06-11 |  | 2026-06-11 | 2026-06-11 | 1d | 127.08d | start no earlier than 2026-06-11 | Calendar 1 |  |  |  |  |
| 158 | 1.6.1.81 | Regular Status Meetings 81 | 1d | 2026-06-18 | 2026-06-18 |  | 2026-06-18 | 2026-06-18 | 1d | 122.08d | start no earlier than 2026-06-18 | Calendar 1 |  |  |  |  |
| 159 | 1.6.1.82 | Regular Status Meetings 82 | 1d | 2026-06-25 | 2026-06-25 |  | 2026-06-25 | 2026-06-25 | 1d | 117.08d | start no earlier than 2026-06-25 | Calendar 1 |  |  |  |  |
| 160 | 1.6.1.83 | Regular Status Meetings 83 | 1d | 2026-07-02 | 2026-07-02 |  | 2026-07-02 | 2026-07-02 | 1d | 112.08d | start no earlier than 2026-07-02 | Calendar 1 |  |  |  |  |
| 161 | 1.6.1.84 | Regular Status Meetings 84 | 1d | 2026-07-09 | 2026-07-09 |  | 2026-07-09 | 2026-07-09 | 1d | 107.08d | start no earlier than 2026-07-09 | Calendar 1 |  |  |  |  |
| 162 | 1.6.1.85 | Regular Status Meetings 85 | 1d | 2026-07-16 | 2026-07-16 |  | 2026-07-16 | 2026-07-16 | 1d | 102.08d | start no earlier than 2026-07-16 | Calendar 1 |  |  |  |  |
| 163 | 1.6.1.86 | Regular Status Meetings 86 | 1d | 2026-07-23 | 2026-07-23 |  | 2026-07-23 | 2026-07-23 | 1d | 97.08d | start no earlier than 2026-07-23 | Calendar 1 |  |  |  |  |
| 164 | 1.6.1.87 | Regular Status Meetings 87 | 1d | 2026-07-30 | 2026-07-30 |  | 2026-07-30 | 2026-07-30 | 1d | 92.08d | start no earlier than 2026-07-30 | Calendar 1 |  |  |  |  |
| 165 | 1.6.1.88 | Regular Status Meetings 88 | 1d | 2026-08-06 | 2026-08-06 |  | 2026-08-06 | 2026-08-06 | 1d | 87.08d | start no earlier than 2026-08-06 | Calendar 1 |  |  |  |  |
| 166 | 1.6.1.89 | Regular Status Meetings 89 | 1d | 2026-08-13 | 2026-08-13 |  | 2026-08-13 | 2026-08-13 | 1d | 82.08d | start no earlier than 2026-08-13 | Calendar 1 |  |  |  |  |
| 167 | 1.6.1.90 | Regular Status Meetings 90 | 1d | 2026-08-20 | 2026-08-20 |  | 2026-08-20 | 2026-08-20 | 1d | 77.08d | start no earlier than 2026-08-20 | Calendar 1 |  |  |  |  |
| 168 | 1.6.1.91 | Regular Status Meetings 91 | 1d | 2026-08-27 | 2026-08-27 |  | 2026-08-27 | 2026-08-27 | 1d | 72.08d | start no earlier than 2026-08-27 | Calendar 1 |  |  |  |  |
| 169 | 1.6.1.92 | Regular Status Meetings 92 | 1d | 2026-09-03 | 2026-09-03 |  | 2026-09-03 | 2026-09-03 | 1d | 67.08d | start no earlier than 2026-09-03 | Calendar 1 |  |  |  |  |
| 170 | 1.6.1.93 | Regular Status Meetings 93 | 1d | 2026-09-10 | 2026-09-10 |  | 2026-09-10 | 2026-09-10 | 1d | 62.08d | start no earlier than 2026-09-10 | Calendar 1 |  |  |  |  |
| 171 | 1.6.1.94 | Regular Status Meetings 94 | 1d | 2026-09-17 | 2026-09-17 |  | 2026-09-17 | 2026-09-17 | 1d | 57.08d | start no earlier than 2026-09-17 | Calendar 1 |  |  |  |  |
| 172 | 1.6.1.95 | Regular Status Meetings 95 | 1d | 2026-09-24 | 2026-09-24 |  | 2026-09-24 | 2026-09-24 | 1d | 52.08d | start no earlier than 2026-09-24 | Calendar 1 |  |  |  |  |
| 173 | 1.6.1.96 | Regular Status Meetings 96 | 1d | 2026-10-01 | 2026-10-01 |  | 2026-10-01 | 2026-10-01 | 1d | 47.08d | start no earlier than 2026-10-01 | Calendar 1 |  |  |  |  |
| 174 | 1.6.1.97 | Regular Status Meetings 97 | 1d | 2026-10-08 | 2026-10-08 |  | 2026-10-08 | 2026-10-08 | 1d | 42.08d | start no earlier than 2026-10-08 | Calendar 1 |  |  |  |  |
| 175 | 1.6.1.98 | Regular Status Meetings 98 | 1d | 2026-10-15 | 2026-10-15 |  | 2026-10-15 | 2026-10-15 | 1d | 37.08d | start no earlier than 2026-10-15 | Calendar 1 |  |  |  |  |
| 176 | 1.6.1.99 | Regular Status Meetings 99 | 1d | 2026-10-22 | 2026-10-22 |  | 2026-10-22 | 2026-10-22 | 1d | 32.08d | start no earlier than 2026-10-22 | Calendar 1 |  |  |  |  |
| 177 | 1.6.1.100 | Regular Status Meetings 100 | 1d | 2026-10-29 | 2026-10-29 |  | 2026-10-29 | 2026-10-29 | 1d | 27.08d | start no earlier than 2026-10-29 | Calendar 1 |  |  |  |  |
| 178 | 1.6.1.101 | Regular Status Meetings 101 | 1d | 2026-11-05 | 2026-11-05 |  | 2026-11-05 | 2026-11-05 | 1d | 22.08d | start no earlier than 2026-11-05 | Calendar 1 |  |  |  |  |
| 179 | 1.6.1.102 | Regular Status Meetings 102 | 1d | 2026-11-12 | 2026-11-12 |  | 2026-11-12 | 2026-11-12 | 1d | 17.08d | start no earlier than 2026-11-12 | Calendar 1 |  |  |  |  |
| 180 | 1.6.1.103 | Regular Status Meetings 103 | 1d | 2026-11-19 | 2026-11-19 |  | 2026-11-19 | 2026-11-19 | 1d | 12.08d | start no earlier than 2026-11-19 | Calendar 1 |  |  |  |  |
| 181 | 1.6.1.104 | Regular Status Meetings 104 | 1d | 2026-11-26 | 2026-11-26 |  | 2026-11-26 | 2026-11-26 | 1d | 7.08d | start no earlier than 2026-11-26 | Calendar 1 |  |  |  |  |
| 182 | 1.6.1.105 | Regular Status Meetings 105 | 1d | 2026-12-03 | 2026-12-03 |  | 2026-12-03 | 2026-12-03 | 1d | 2.08d | start no earlier than 2026-12-03 | Calendar 1 |  |  |  |  |
| 183 | 1.6.2 | Documentation | 20d | 2026-11-09 | 2026-12-08 | 72 | 2026-11-09 | 2026-12-08 | 20d | 0d |  |  | Documentation Specialists | 160h | 2,400 | 2,400 |
